Schedule from MS Project, 2012-05-07 to 2012-09-13.

## Calendars

- 标准: Mon-Fri 08:00-12:00, 13:00-17:00; Sat-Sun off.

## Schedule

| ID | WBS | Task | Type | Duration | Start | Finish | Predecessors | Total slack | Free slack | Constraint |
| --- | --- | --- | --- | --- | --- | --- | --- | --- | --- | --- |
| 1 | 1 | **Lenovo Wireless Router** |  | 94d | 2012-05-07 | 2012-09-13 |  | 0d |  |  |
| 2 | 1.1 | Award | milestone | 0d | 2012-05-07 | 2012-05-07 |  | 0d |  | start no earlier than 2012-05-07 |
| 3 | 1.2 | 名称确定，PN申请 |  | 10d | 2012-05-07 | 2012-05-18 | 2 | 13d | 0d |  |
| 4 | 1.3 | **模具** |  | 48d | 2012-05-07 | 2012-07-11 |  | 7d | 21d |  |
| 5 | 1.3.1 | 模具ID第一轮更改设计 |  | 5d | 2012-05-07 | 2012-05-11 | 2 | 7d | 0d |  |
| 6 | 1.3.2 | 模具更改review |  | 4d | 2012-05-14 | 2012-05-17 | 5 | 7d | 0d |  |
| 7 | 1.3.3 | 模具ID第二轮更改设计 |  | 2d | 2012-05-18 | 2012-05-21 | 6 | 7d | 0d |  |
| 8 | 1.3.4 | 模具更改review |  | 3d | 2012-05-22 | 2012-05-24 | 7 | 8d | 0d |  |
| 9 | 1.3.5 | mockup |  | 5d | 2012-05-22 | 2012-05-28 | 7 | 7d | 0d |  |
| 10 | 1.3.6 | T0 |  | 15d | 2012-05-25 | 2012-06-14 | 8 | 8d | 0d |  |
| 11 | 1.3.7 | T1 |  | 8d | 2012-06-15 | 2012-06-26 | 10 | 21d | 0d |  |
| 12 | 1.3.8 | T-final |  | 8d | 2012-06-27 | 2012-07-06 | 11 | 21d | 0d |  |
| 13 | 1.3.9 | 制样及确认 |  | 3d | 2012-07-09 | 2012-07-11 | 12 | 21d |  |  |
| 14 | 1.4 | **软件** |  | 69d | 2012-05-07 | 2012-08-09 |  | 0d |  |  |
| 15 | 1.4.1 | 沟通明确需求 |  | 4d | 2012-05-07 | 2012-05-10 | 2 | 0d |  |  |
| 16 | 1.4.2 | 软件详细设计规格确认书 |  | 5d | 2012-05-11 | 2012-05-17 | 15 | 0d |  |  |
| 17 | 1.4.3 | alpha |  | 13d | 2012-05-18 | 2012-06-05 | 16 | 0d |  | start no earlier than 2006-10-27 |
| 18 | 1.4.4 | alpha测试 |  | 4d | 2012-06-06 | 2012-06-11 | 17 | 0d |  |  |
| 19 | 1.4.5 | beta |  | 8d | 2012-06-12 | 2012-06-21 | 18 | 0d |  |  |
| 20 | 1.4.6 | 联调测试,beta测试,bug修正 |  | 25d | 2012-06-22 | 2012-07-26 | 19 | 0d |  |  |
| 21 | 1.4.7 | 封版 |  | 5d | 2012-07-27 | 2012-08-02 | 20 | 0d |  |  |
| 22 | 1.4.8 | 封版测试 |  | 5d | 2012-08-03 | 2012-08-09 | 21 | 0d |  |  |
| 23 | 1.5 | **UI** |  | 5d | 2012-05-07 | 2012-05-11 |  | 64d |  |  |
| 24 | 1.5.1 | 确认UI风格和供应商 |  | 5d | 2012-05-07 | 2012-05-11 | 2 | 64d |  |  |

| ID | WBS | Task | Duration | Start | Finish | Predecessors | Total slack | Free slack |
| --- | --- | --- | --- | --- | --- | --- | --- | --- |
| 25 | 1.6 | **动画** | 5d | 2012-05-07 | 2012-05-11 |  | 64d |  |
| 26 | 1.6.1 | 确认UI风格和供应商 | 5d | 2012-05-07 | 2012-05-11 | 2 | 64d |  |
| 27 | 1.7 | **认证** | 74d | 2012-05-07 | 2012-08-16 |  | 7d |  |
| 28 | 1.7.1 | **SRRC** | 61d | 2012-05-07 | 2012-07-30 |  | 20d |  |
| 29 | 1.7.1.1 | 材料准备 | 5d | 2012-05-07 | 2012-05-11 | 2 | 76d |  |
| 30 | 1.7.1.2 | 送测 | 10d | 2012-06-15 | 2012-06-28 | 10 | 8d | 0d |
| 31 | 1.7.1.3 | 审批 | 22d | 2012-06-29 | 2012-07-30 | 30 | 8d |  |
| 32 | 1.7.2 | **CCC** | 74d | 2012-05-07 | 2012-08-16 |  | 7d |  |
| 33 | 1.7.2.1 | 材料准备 | 10d | 2012-05-07 | 2012-05-18 | 2 | 13d | 6d |
| 34 | 1.7.2.2 | 送测 | 40d | 2012-05-29 | 2012-07-23 | 33, 3, 9 | 7d | 0d |
| 35 | 1.7.2.3 | 厂审 | 15d | 2012-07-24 | 2012-08-13 | 34 | 7d | 0d |
| 36 | 1.7.2.4 | 审核，制证 | 3d | 2012-08-14 | 2012-08-16 | 34, 35 | 7d |  |
| 37 | 1.8 | **包材** | 46d | 2012-05-21 | 2012-07-23 |  | 3d | 0d |
| 38 | 1.8.1 | **彩盒** | 23d | 2012-05-21 | 2012-06-20 |  | 26d |  |
| 39 | 1.8.1.1 | 彩盒设计及确认 | 7d | 2012-05-21 | 2012-05-29 | 3 | 26d | 0d |
| 40 | 1.8.1.2 | 彩盒打样第一轮 | 5d | 2012-05-30 | 2012-06-05 | 39 | 26d | 0d |
| 41 | 1.8.1.3 | 确认 | 3d | 2012-06-06 | 2012-06-08 | 40 | 26d | 0d |
| 42 | 1.8.1.4 | 彩盒打样第二轮 | 5d | 2012-06-11 | 2012-06-15 | 41 | 26d | 0d |
| 43 | 1.8.1.5 | 确认 | 3d | 2012-06-18 | 2012-06-20 | 42 | 26d |  |
| 44 | 1.8.2 | **卡通箱** | 18d | 2012-05-21 | 2012-06-13 | 2 | 31d |  |
| 45 | 1.8.2.1 | 设计及确认 | 4d | 2012-05-21 | 2012-05-24 | 3 | 31d | 0d |
| 46 | 1.8.2.2 | 打样第一轮 | 4d | 2012-05-25 | 2012-05-30 | 45 | 31d | 0d |
| 47 | 1.8.2.3 | 确认 | 3d | 2012-05-31 | 2012-06-04 | 46 | 31d | 0d |
| 48 | 1.8.2.4 | 打样第二轮 | 4d | 2012-06-05 | 2012-06-08 | 47 | 31d | 0d |
| 49 | 1.8.2.5 | 确认 | 3d | 2012-06-11 | 2012-06-13 | 48 | 31d |  |

| ID | WBS | Task | Type | Duration | Start | Finish | Predecessors | Total slack | Free slack |
| --- | --- | --- | --- | --- | --- | --- | --- | --- | --- |
| 50 | 1.8.3 | **保修证书** |  | 23d | 2012-05-21 | 2012-06-20 |  | 26d |  |
| 51 | 1.8.3.1 | 设计及确认 |  | 5d | 2012-05-21 | 2012-05-25 | 3 | 26d | 0d |
| 52 | 1.8.3.2 | 打样第一轮 |  | 5d | 2012-05-28 | 2012-06-01 | 51 | 26d | 0d |
| 53 | 1.8.3.3 | 确认 |  | 5d | 2012-06-04 | 2012-06-08 | 52 | 26d | 0d |
| 54 | 1.8.3.4 | 打样第二轮 |  | 5d | 2012-06-11 | 2012-06-15 | 53 | 26d | 0d |
| 55 | 1.8.3.5 | 确认 |  | 3d | 2012-06-18 | 2012-06-20 | 54 | 26d |  |
| 56 | 1.8.4 | **快速指南** |  | 22d | 2012-06-22 | 2012-07-23 | 2 | 3d |  |
| 57 | 1.8.4.1 | 设计及确认 |  | 8d | 2012-06-22 | 2012-07-03 | 19 | 3d | 0d |
| 58 | 1.8.4.2 | 打样第一轮 |  | 4d | 2012-07-04 | 2012-07-09 | 57 | 3d | 0d |
| 59 | 1.8.4.3 | 确认 |  | 3d | 2012-07-10 | 2012-07-12 | 58 | 3d | 0d |
| 60 | 1.8.4.4 | 打样第二轮 |  | 4d | 2012-07-13 | 2012-07-18 | 59 | 3d | 0d |
| 61 | 1.8.4.5 | 确认 |  | 3d | 2012-07-19 | 2012-07-23 | 60 | 3d |  |
| 62 | 1.8.5 | **CD** |  | 16d | 2012-05-29 | 2012-06-20 |  | 26d |  |
| 63 | 1.8.5.1 | CD图案设计 | milestone | 0d | 2012-05-29 | 2012-05-29 | 39 | 26d | 0d |
| 64 | 1.8.5.2 | CD打样 |  | 5d | 2012-05-30 | 2012-06-05 | 63 | 26d | 0d |
| 65 | 1.8.5.3 | 图案确认 |  | 3d | 2012-06-06 | 2012-06-08 | 64 | 26d | 0d |
| 66 | 1.8.5.4 | CD打样第二轮 |  | 5d | 2012-06-11 | 2012-06-15 | 65 | 26d | 0d |
| 67 | 1.8.5.5 | 图案确认 |  | 3d | 2012-06-18 | 2012-06-20 | 66 | 26d |  |
| 68 | 1.9 | 数据导入 |  | 10d | 2012-07-24 | 2012-08-06 | 37 | 3d |  |
| 69 | 1.10 | 小批量试产 |  | 6d | 2012-08-10 | 2012-08-17 | 4, 14, 23, 25, 31, 68 | 0d |  |
| 70 | 1.11 | **测试** |  | 9d | 2012-08-10 | 2012-08-22 |  | 16d |  |
| 71 | 1.11.1 | SIT |  | 3d | 2012-08-10 | 2012-08-14 | 12, 22 | 19d | 3d |
| 72 | 1.11.2 | SVT |  | 3d | 2012-08-20 | 2012-08-22 | 71, 69 | 16d |  |
| 73 | 1.12 | **封样制作PRN** |  | 19d | 2012-08-20 | 2012-09-13 |  | 0d |  |
| 74 | 1.12.1 | 封样制作及邮寄 |  | 4d | 2012-08-20 | 2012-08-23 | 69 | 0d |  |
| 75 | 1.12.2 | 材料及文档准备 |  | 2d | 2012-08-24 | 2012-08-27 | 74 | 0d |  |
| 76 | 1.12.3 | QR及PRN |  | 3d | 2012-08-28 | 2012-08-30 | 75, 27 | 0d |  |
| 77 | 1.12.4 | 生产 |  | 5d | 2012-08-31 | 2012-09-06 | 76 | 0d |  |
| 78 | 1.12.5 | SS |  | 5d | 2012-09-07 | 2012-09-13 | 77 | 0d |  |
